# Diplomarbeit

Schedule from Planner, 2018-12-10 to 2019-04-27.

## Calendars

- Default: Mon-Fri 19:00-21:00; Sat off; Sun 08:00-12:00, 13:00-17:00. Exceptions (off unless hours are given): 2018-12-10 to 2018-12-13 19:00-21:00, 2018-12-14, 2018-12-20 19:00-21:00, 2018-12-22 08:00-12:00, 13:00-17:00, 2018-12-24 19:00-21:00, 2018-12-25 08:00-12:00, 13:00-17:00, 2018-12-26 19:00-21:00, 2018-12-27 to 2018-12-30 08:00-12:00, 13:00-17:00, 2018-12-31 19:00-21:00, 2019-01-01, 2019-01-02 to 2019-01-05 08:00-12:00, 13:00-17:00, 2019-01-14 08:00-12:00, 13:00-17:00, 2019-01-19 08:00-12:00, 13:00-17:00, 2019-01-21 08:00-12:00, 13:00-17:00, 2019-01-26 08:00-12:00, 13:00-17:00, 2019-01-28 08:00-12:00, 13:00-17:00, 2019-02-02 08:00-12:00, 13:00-17:00, 2019-02-04 08:00-12:00, 13:00-17:00, 2019-02-09 08:00-12:00, 13:00-17:00, 2019-02-11 08:00-12:00, 13:00-17:00, 2019-02-18 08:00-12:00, 13:00-17:00, 2019-02-25 08:00-12:00, 13:00-17:00, 2019-03-02 08:00-12:00, 13:00-17:00, 2019-03-04 08:00-12:00, 13:00-17:00, 2019-03-11 08:00-12:00, 13:00-17:00, 2019-03-16 08:00-12:00, 13:00-17:00, 2019-04-27 08:00-12:00, 13:00-17:00.

## Resources

| Resource | Rate |
| --- | --- |
| Andreas Zweili | 60 |

## Schedule

| ID | WBS | Task | Type | Duration | Start | Finish | Predecessors | Constraint | Resources | Work |
| --- | --- | --- | --- | --- | --- | --- | --- | --- | --- | --- |
| 1 | 1 | Start Diplomarbeit | milestone | 0d | 2018-12-10 | 2018-12-10 |  | must start on 2018-12-10 | Andreas Zweili |  |
| 2 | 2 | **Planung** |  |  | 2018-12-10 | 2018-12-27 |  |  |  | 45h |
| 3 | 2.1 | Zeitplan erarbeiten |  |  | 2018-12-10 | 2018-12-12 |  | must start on 2018-12-10 | Andreas Zweili | 5h |
| 4 | 2.2 | Ziele dokumentieren |  |  | 2018-12-12 | 2018-12-16 | 3 |  | Andreas Zweili | 5h |
| 5 | 2.3 | **Lösungsvariante erarbeiten** |  | 2.12d | 2018-12-16 | 2018-12-22 |  | start no earlier than 2018-12-10 |  | 17h |
| 6 | 2.3.1 | Lösungsvarianten erfassen |  |  | 2018-12-16 | 2018-12-16 | 4 |  | Andreas Zweili | 5h |
| 7 | 2.3.2 | Lösungsvarianten bewerten |  |  | 2018-12-16 | 2018-12-20 | 6 |  | Andreas Zweili | 8h |
| 8 | 2.3.3 | Lösungsvariante bestimmen |  |  | 2018-12-20 | 2018-12-22 | 7 |  | Andreas Zweili | 4h |
| 9 | 2.4 | SWOT Analyse erstellen |  |  | 2018-12-22 | 2018-12-22 | 8 |  | Andreas Zweili | 5h |
| 10 | 2.5 | **Umweltanalyse erstellen** |  |  | 2018-12-22 | 2018-12-23 |  |  |  | 3h |
| 11 | 2.5.1 | Stakeholder Diagramm erstellen |  |  | 2018-12-22 | 2018-12-23 | 9 |  | Andreas Zweili | 3h |
| 12 | 2.6 | **Risikoanalyse erstellen** |  |  | 2018-12-23 | 2018-12-25 |  |  |  | 10h |
| 13 | 2.6.1 | Risiken erfassen |  |  | 2018-12-23 | 2018-12-23 | 11 |  | Andreas Zweili | 4h |
| 14 | 2.6.2 | Risiken bewerten |  |  | 2018-12-23 | 2018-12-23 | 13 |  | Andreas Zweili | 2h |
| 15 | 2.6.3 | Massnahmen Katalog erarbeiten |  |  | 2018-12-23 | 2018-12-25 | 14 |  | Andreas Zweili | 4h |
| 16 | 2.7 | Meeting #1 | milestone | 0d | 2018-12-28 | 2018-12-28 |  | must start on 2018-12-28 | Andreas Zweili |  |
| 17 | 3 | **Durchführung** |  |  | 2018-12-25 | 2019-03-10 |  |  |  | 221h |
| 18 | 3.1 | User Stories erarbeiten |  |  | 2018-12-25 | 2018-12-25 | 15 |  | Andreas Zweili | 5h |
| 19 | 3.2 | **Use Cases erarbeiten** |  |  | 2018-12-25 | 2018-12-27 |  |  |  | 12h |
| 20 | 3.2.1 | Use Case Diagramm erstellen |  |  | 2018-12-25 | 2018-12-26 | 18 |  | Andreas Zweili | 4h |
| 21 | 3.2.2 | Use Cases ausarbeiten |  |  | 2018-12-27 | 2018-12-27 | 20 |  | Andreas Zweili | 8h |
| 22 | 3.3 | **UI** |  |  | 2018-12-28 | 2019-01-02 |  |  |  | 30h |
| 23 | 3.3.1 | UI Test ausarbeiten |  |  | 2018-12-28 | 2018-12-28 | 21 |  | Andreas Zweili | 8h |
| 24 | 3.3.2 | UI ausarbeiten |  |  | 2018-12-29 | 2018-12-29 | 23 |  | Andreas Zweili | 8h |
| 25 | 3.3.3 | UI von Usern testen lassen |  |  | 2018-12-30 | 2018-12-30 | 24 |  | Andreas Zweili | 5h |
| 26 | 3.3.4 | UI Test Resultate auswerten |  |  | 2018-12-30 | 2018-12-31 | 25 |  | Andreas Zweili | 4h |
| 27 | 3.3.5 | UI anpassen |  |  | 2018-12-31 | 2019-01-02 | 26 |  | Andreas Zweili | 5h |

| ID | WBS | Task | Type | Duration | Start | Finish | Predecessors | Constraint | Resources | Work |
| --- | --- | --- | --- | --- | --- | --- | --- | --- | --- | --- |
| 28 | 3.4 | **Testing** |  | 19.25d | 2019-01-02 | 2019-02-04 |  |  |  | 32h |
| 29 | 3.4.1 | Testfälle erstellen |  |  | 2019-01-02 | 2019-01-03 | 27 |  | Andreas Zweili | 12h |
| 30 | 3.4.2 | Meeting #2 | milestone | 0d | 2019-02-01 | 2019-02-01 |  | must start on 2019-02-01 | Andreas Zweili |  |
| 31 | 3.4.3 | Testfälle anwenden |  |  | 2019-02-02 | 2019-02-04 | 46 |  |  | 20h |
| 32 | 3.5 | Github Repository erstellen |  |  | 2019-01-04 | 2019-01-04 | 29 |  | Andreas Zweili | 2h |
| 33 | 3.6 | **Coding** |  |  | 2019-01-04 | 2019-02-01 |  |  |  | 120h |
| 34 | 3.6.1 | Backend Read Config Funktion |  |  | 2019-01-04 | 2019-01-05 | 32 |  | Andreas Zweili | 8h |
| 35 | 3.6.2 | Frontend Read Config Funktion |  |  | 2019-01-05 | 2019-01-06 | 34 |  | Andreas Zweili | 8h |
| 36 | 3.6.3 | Backend Write Config Funktion |  |  | 2019-01-06 | 2019-01-07 | 35 |  | Andreas Zweili | 8h |
| 37 | 3.6.4 | Frontend Write Config Funktion |  |  | 2019-01-08 | 2019-01-11 | 36 |  | Andreas Zweili | 8h |
| 38 | 3.6.5 | Backend Backup Funktion |  |  | 2019-01-13 | 2019-01-13 | 37 |  | Andreas Zweili | 8h |
| 39 | 3.6.6 | Frontend Backup Funktion |  |  | 2019-01-14 | 2019-01-14 | 38 |  | Andreas Zweili | 8h |
| 40 | 3.6.7 | Backend Restore Funktion |  |  | 2019-01-15 | 2019-01-18 | 39 |  | Andreas Zweili | 8h |
| 41 | 3.6.8 | Frontend Restore Funktion |  |  | 2019-01-19 | 2019-01-19 | 40 |  | Andreas Zweili | 8h |
| 42 | 3.6.9 | Backend Mounting Funktion |  |  | 2019-01-20 | 2019-01-20 | 41 |  | Andreas Zweili | 8h |
| 43 | 3.6.10 | Frontend Mounting Funktion |  |  | 2019-01-21 | 2019-01-21 | 42 |  | Andreas Zweili | 8h |
| 44 | 3.6.11 | Backend Delete Funktion |  |  | 2019-01-22 | 2019-01-25 | 43 |  | Andreas Zweili | 8h |
| 45 | 3.6.12 | Frontend Delete Funktion |  |  | 2019-01-26 | 2019-01-26 | 44 |  | Andreas Zweili | 8h |
| 46 | 3.6.13 | Coding Filler |  |  | 2019-01-27 | 2019-02-01 | 45 |  | Andreas Zweili | 24h |
| 47 | 3.7 | Meeting #3 | milestone | 0d | 2019-03-01 | 2019-03-01 |  | must start on 2019-03-01 | Andreas Zweili |  |
| 48 | 3.8 | Arbeit korrigieren |  |  | 2019-03-04 | 2019-03-10 |  | start no earlier than 2019-03-04 | Andreas Zweili | 20h |
| 49 | 4 | Diplomarbeit abgeben | milestone | 0d | 2019-03-18 | 2019-03-18 |  | must start on 2019-03-18 | Andreas Zweili [0%] |  |
| 50 | 5 | Präsentation | milestone | 0d | 2019-04-02 | 2019-04-02 | 49 | start no earlier than 2019-04-02 | Andreas Zweili |  |
| 51 | 6 | **Ausstellung** |  |  | 2019-03-31 | 2019-04-26 |  | must start on 2019-04-27 |  | 24h |
| 52 | 6.1 | Ausstellung vorbereiten |  | 9d | 2019-03-31 | 2019-04-26 |  | start no earlier than 2019-03-31 |  | 24h |
| 53 | 6.2 | Arbeit ausstellen | milestone | 0d | 2019-04-27 | 2019-04-27 |  | must start on 2019-04-27 | Andreas Zweili |  |
